# setb

Schedule from MS Project, 2023-02-28 to 2023-07-05, costs in $, A marks actual dates.

## Calendars

- Standard: Mon-Fri 08:00-12:00, 13:00-17:00; Sat-Sun off.

## Resources

| Resource | Rate | Cost per use |
| --- | --- | --- |
| Vidit Pandey | 50 | 55 |
| Subrat Regmi | 40 | 42 |
| Raaj Koirala | 35 | 45 |
| Utkarsha Bhandari | 65 | 40 |

## Schedule

| ID | WBS | Task | Duration | Start | Finish | Predecessors | Complete | Remaining | Baseline start | Baseline finish | Baseline duration | Total slack | Free slack | Constraint | Resources | Work | Actual work | Cost | Baseline cost | Actual cost |
| --- | --- | --- | --- | --- | --- | --- | --- | --- | --- | --- | --- | --- | --- | --- | --- | --- | --- | --- | --- | --- |
| 1 | 1 | Project Analysis | 7d | 2023-02-28 A | 2023-03-08 A |  | 100% |  | 2023-02-28 | 2023-03-08 | 7d |  |  |  | Vidit Pandey [5%]; Utkarsha Bhandari; Subrat Regmi | 2.8h | 2.8h | 224.75 | 182.75 | 224.75 |
| 2 | 2 | **System Analysis** | 10d | 2023-03-11 A | 2023-03-26 |  | 60% | 4d |  |  |  | 0.5d |  |  |  | 9.2h | 7.6h | 397.45 |  | 317.45 |
| 3 | 2.1 | Feasibility Study | 1d | 2023-03-11 A | 2023-03-13 A | 1 | 100% |  | 2023-03-11 | 2023-03-13 | 1d |  |  |  | Raaj Koirala [50%] | 4h | 4h | 162.5 | 162.5 | 162.5 |
| 4 | 2.2 | Requirements gathering | 4d | 2023-03-14 A | 2023-03-19 A | 3 | 100% |  | 2023-03-14 | 2023-03-19 | 4d |  |  | finish no earlier than 2023-03-19 | Subrat Regmi [10%] | 3.2h | 3.2h | 132.2 | 132.2 | 132.2 |
| 5 | 2.3 | Activity Planning | 5d | 2023-03-20 A | 2023-03-26 | 4 | 20% | 4d | 2023-03-20 | 2023-03-26 | 5d | 0.5d | 0d | finish no earlier than 2023-03-26 | Vidit Pandey [5%] | 2h | 0.4h | 102.75 | 102.75 | 22.75 |
| 6 | 3 | **System Design** | 6d | 2023-03-27 A | 2023-04-03 |  | 21% | 4.75d |  |  |  | 5.5d |  |  |  | 44h | 9.2h | 2,182.5 |  | 424.5 |
| 7 | 3.1 | Software Design | 5d | 2023-03-27 A | 2023-04-02 | 5 | 10% | 4.5d | 2023-03-27 | 2023-04-02 | 5d | 6.5d | 1d | finish no earlier than 2023-04-02 | Utkarsha Bhandari [50%] | 20h | 2h | 1,320 | 1,320 | 150 |
| 8 | 3.2 | Database Design | 6d | 2023-03-27 A | 2023-04-03 | 5 | 30% | 4.2d | 2023-03-27 | 2023-04-03 | 6d | 5.5d | 0d |  | Raaj Koirala [50%] | 24h | 7.2h | 862.5 | 862.5 | 274.5 |
| 9 | 4 | **Implementation** | 46d | 2023-04-04 A | 2023-06-06 |  | 12% | 40.5d |  |  |  | 0d |  |  |  | 88.8h | 2.2h | 5,566.95 |  | 112.75 |
| 10 | 4.1 | Frontend Development | 22d | 2023-04-04 A | 2023-05-03 | 7, 8 | 25% | 16.5d | 2023-04-04 | 2023-05-03 | 22d | 0d |  |  | Vidit Pandey [5%] | 8.8h | 2.2h | 442.75 | 442.75 | 112.75 |
| 11 | 4.2 | Backend Developmennt | 19d | 2023-05-04 | 2023-05-30 | 10 |  |  | 2023-05-04 | 2023-05-30 | 19d | 0d |  |  | Utkarsha Bhandari [50%] | 76h |  | 4,960 | 4,960 |  |
| 12 | 4.3 | Payment Integration | 5d | 2023-05-31 | 2023-06-06 | 11 |  |  | 2023-05-31 | 2023-06-06 | 5d | 0d |  |  | Subrat Regmi [10%] | 4h |  | 164.2 | 164.2 |  |
| 13 | 5 | Software Testing | 12d | 2023-06-07 | 2023-06-22 | 12 |  |  | 2023-06-07 | 2023-06-22 | 12d | 0d |  |  | Raaj Koirala [50%] | 48h |  | 1,702.5 | 1,702.5 |  |
| 14 | 6 | User manuals Development | 9d | 2023-06-23 | 2023-07-05 | 13 |  |  | 2023-06-23 | 2023-07-05 | 9d | 0d |  |  | Subrat Regmi [10%] | 7.2h |  | 292.2 | 292.2 |  |
